gantt
    title Lộ trình Triển khai Dự án Mekong Technology (2026–2033)
    dateFormat YYYY-MM
    axisFormat %Y

    section Phase 0 (1,50M)
    Nộp Mẫu 1.4 KCNC           :p0a, 2026-04, 2026-06
    Lập Báo cáo ĐTM             :p0b, 2026-04, 2026-09
    Thiết kế kiến trúc + M&E    :p0c, 2026-07, 2026-12
    Xin GPXD                    :p0d, 2026-10, 2026-12
    San lấp mặt bằng            :p0e, 2027-01, 2027-03
    Tuyển nhân sự core          :p0f, 2026-07, 2027-03

    section Phase 1 (8,40M)
    Xây dựng VP 3 tầng          :p1a, 2027-04, 2028-04
    Xây dựng Nhà xưởng 2T      :p1b, 2027-04, 2028-12
    Xây dựng Utility 2T         :p1c, 2027-07, 2028-03
    Lắp M&E tổng thể            :p1d, 2028-01, 2029-03
    Lắp PCCC toàn khu           :p1e, 2028-07, 2029-03
    Solar 200 kWp               :p1f, 2028-10, 2029-03
    Đường nội bộ + sân bãi      :p1g, 2028-01, 2028-12
    EDGE Certification          :p1h, 2028-10, 2029-03

    section Phase 2 (9,60M)
    Lắp dây chuyền SMT          :p2a, 2029-04, 2029-12
    Lắp CNC 10 máy              :p2b, 2029-04, 2030-03
    EDM + Surface Grinder       :p2c, 2029-07, 2029-12
    Robot Assembly Line          :p2d, 2030-01, 2030-09
    Setup DC nội bộ             :p2e, 2029-04, 2029-12
    ERP/MES/CAD-CAM             :p2f, 2029-07, 2030-03
    QA Lab equipment            :p2g, 2029-10, 2030-03
    Commissioning tổng          :p2h, 2030-10, 2031-03

    section Phase 3 (2,50M)
    IoT Gateway sản xuất        :p3a, 2031-04, 2033-03
    CNC nhận đơn FDI            :p3b, 2031-07, 2033-03
    Robot AMR hoàn thiện        :p3c, 2031-10, 2033-03
    Ramp-up doanh thu           :p3d, 2031-04, 2033-03